# Cronograma_Preliminar

Schedule from MS Project, 2016-10-03 to 2016-11-07, costs in R$, A marks actual dates.

## Calendars

- Padrão: Mon-Fri 09:00-12:00, 13:00-18:00; Sat-Sun off.

## Resources

| Resource | Rate |
| --- | --- |
| Vinícius | 150 |
| Cliente (Adler) |  |
| Gabriel | 150 |
| Renam | 150 |
| Fábio | 150 |
| Juliana | 150 |

## Schedule

| ID | WBS | Task | Duration | Start | Finish | Predecessors | Complete | Remaining | Baseline start | Baseline finish | Baseline duration | Total slack | Constraint | Resources | Work | Actual work | Cost | Baseline cost | Actual cost |
| --- | --- | --- | --- | --- | --- | --- | --- | --- | --- | --- | --- | --- | --- | --- | --- | --- | --- | --- | --- |
| 1 | 1 | **Projeto Sala de Aula** | 25.78d? | 2016-10-03 08:00 A | 2016-11-07 16:12 |  | 48% | 13.41d? | 2016-10-03 08:00 | 2016-11-01 17:19 | 21.92d? | 0d |  |  | 310.5h | 149.88h | 46,575.34 | 42,300.34 | 22,481.59 |
| 2 | 1.1 | **Prospecção** | 2.81d | 2016-10-03 08:00 A | 2016-10-05 16:30 A |  | 100% |  | 2016-10-03 08:00 | 2016-10-05 16:30 | 2.81d |  |  |  | 13h | 13h | 1,950 | 1,950 | 1,950 |
| 3 | 1.1.1 | **Proposta Técnica** | 2d | 2016-10-03 08:00 A | 2016-10-05 08:15 A |  | 100% |  | 2016-10-03 08:00 | 2016-10-05 08:15 | 2d |  |  |  | 7h | 7h | 1,050 | 1,050 | 1,050 |
| 4 | 1.1.1.1 | Estudar Domínio de Aplicação | 0.25d | 2016-10-03 08:00 A | 2016-10-03 10:00 A |  | 100% |  | 2016-10-03 08:00 | 2016-10-03 10:00 | 0.25d |  | start no earlier than 2016-10-03 08:00 | Renam [50%]; Fábio; Gabriel; Juliana; Vinícius | 1h | 1h | 150 | 150 | 150 |
| 5 | 1.1.1.2 | Redigir Proposta Técnica | 0.21d | 2016-10-04 14:00 A | 2016-10-04 15:40 A | 4 | 100% |  | 2016-10-04 14:00 | 2016-10-04 15:40 | 0.21d |  | start no earlier than 2016-10-03 08:00 | Fábio; Juliana; Vinícius; Gabriel; Renam | 5h | 5h | 750 | 750 | 750 |
| 6 | 1.1.1.3 | Revisar Proposta Técnica | 0.03d | 2016-10-05 08:00 A | 2016-10-05 08:15 A | 5 | 100% |  | 2016-10-05 08:00 | 2016-10-05 08:15 | 0.03d |  | start no earlier than 2016-10-03 08:00 | Fábio; Gabriel; Juliana; Renam | 1h | 1h | 150 | 150 | 150 |
| 7 | 1.1.2 | **Estimativa Preliminar de Tamanho** | 0.19d | 2016-10-05 08:30 A | 2016-10-05 10:30 A |  | 100% |  | 2016-10-05 08:30 | 2016-10-05 10:30 | 0.19d |  |  |  | 2h | 2h | 300 | 300 | 300 |
| 8 | 1.1.2.1 | Estimar Tamanho do Projeto | 0.12d | 2016-10-05 08:30 A | 2016-10-05 09:30 A | 6 | 100% |  | 2016-10-05 08:30 | 2016-10-05 09:30 | 0.12d |  | start no earlier than 2016-10-03 08:00 | Gabriel | 1h | 1h | 150 | 150 | 150 |
| 9 | 1.1.2.2 | Revisar Estimativa de Tamanho do Projeto | 0.12d | 2016-10-05 09:30 A | 2016-10-05 10:30 A | 8 | 100% |  | 2016-10-05 09:30 | 2016-10-05 10:30 | 0.12d |  | start no earlier than 2016-10-03 08:00 | Vinícius | 1h | 1h | 150 | 150 | 150 |
| 10 | 1.1.3 | **Estimativa Preliminar de Cronograma e Orçamento** | 0.62d | 2016-10-05 10:30 A | 2016-10-05 16:30 A |  | 100% |  | 2016-10-05 10:30 | 2016-10-05 16:30 | 0.62d |  |  |  | 4h | 4h | 600 | 600 | 600 |
| 11 | 1.1.3.1 | Elaborar Cronograma e Orçamento Preliminares | 0.38d | 2016-10-05 10:30 A | 2016-10-05 15:30 A | 9 | 100% |  | 2016-10-05 10:30 | 2016-10-05 15:30 | 0.38d |  | start no earlier than 2016-10-03 08:00 | Fábio | 3h | 3h | 450 | 450 | 450 |
| 12 | 1.1.3.2 | Revisar Cronograma e Orçamento Preliminares | 0.12d | 2016-10-05 15:30 A | 2016-10-05 16:30 A | 11 | 100% |  | 2016-10-05 15:30 | 2016-10-05 16:30 | 0.12d |  | start no earlier than 2016-10-03 08:00 | Juliana | 1h | 1h | 150 | 150 | 150 |
| 13 | 1.2 | **Análise** | 8.31d? | 2016-10-05 16:30 A | 2016-10-18 09:57 A | 2 | 100% |  | 2016-10-05 16:30 | 2016-10-18 09:57 | 8.31d? |  |  |  | 46h | 46h | 6,900.15 | 6,900.15 | 6,900.15 |
| 14 | 1.2.1 | **Documento de Requisitos** | 3.31d? | 2016-10-05 16:30 A | 2016-10-11 09:57 A |  | 100% |  | 2016-10-05 16:30 | 2016-10-11 09:57 | 3.31d? |  |  |  | 20h | 20h | 3,000.15 | 3,000.15 | 3,000.15 |
| 15 | 1.2.1.1 | Elaborar o Documento de Requisitos | 0.93d? | 2016-10-05 16:30 A | 2016-10-06 15:54 A | 12 | 100% |  | 2016-10-05 16:30 | 2016-10-06 15:54 | 0.93d? |  | start no earlier than 2016-10-03 08:00 | Fábio [67.6%]; Juliana [67.6%]; Vinícius [67.6%] | 15h | 15h | 2,250.15 | 2,250.15 | 2,250.15 |
| 16 | 1.2.1.2 | Revisar Documentos de Requisitos | 1.46d? | 2016-10-07 16:17 A | 2016-10-11 09:57 A | 15 | 100% |  | 2016-10-07 16:17 | 2016-10-11 09:57 | 1.46d? |  | start no earlier than 2016-10-03 08:00 | Gabriel [14.3%]; Juliana [14.3%]; Renam [14.3%] | 5h | 5h | 750 | 750 | 750 |
| 17 | 1.2.2 | **Matriz de Rastreabilidade Bidirecional** | 3.83d? | 2016-10-12 11:17 A | 2016-10-18 09:57 A |  | 100% |  | 2016-10-12 11:17 | 2016-10-18 09:57 | 3.83d? |  |  |  | 26h | 26h | 3,900 | 3,900 | 3,900 |
| 18 | 1.2.2.1 | Elaborar MRB | 0.67d? | 2016-10-12 11:17 A | 2016-10-13 08:37 A | 16 | 100% |  | 2016-10-12 11:17 | 2016-10-13 08:37 | 0.67d? |  | start no earlier than 2016-10-03 08:00 | Gabriel; Renam; Vinícius | 16h | 16h | 2,400 | 2,400 | 2,400 |
| 19 | 1.2.2.2 | Revisar MRB | 2.5d? | 2016-10-13 15:57 A | 2016-10-18 09:57 A | 18 | 100% |  | 2016-10-13 15:57 | 2016-10-18 09:57 | 2.5d? |  | start no earlier than 2016-10-03 08:00 | Fábio [25%]; Juliana [25%] | 10h | 10h | 1,500 | 1,500 | 1,500 |
| 20 | 1.3 | **Projeto** | 1.14d? | 2016-10-18 09:57 A | 2016-10-19 11:05 A | 13 | 100% |  | 2016-10-18 09:00 | 2016-10-19 10:08 | 1.14d? |  |  |  | 10.5h | 10.5h | 1,575.19 | 1,800.19 | 1,575.19 |
| 21 | 1.3.1 | **Diagrama de Classes** | 1.14d? | 2016-10-18 09:57 A | 2016-10-19 11:05 A |  | 100% |  | 2016-10-18 09:57 | 2016-10-19 11:05 | 1.14d? |  |  |  | 8h | 8h | 1,200.19 | 1,200.19 | 1,200.19 |
| 22 | 1.3.1.1 | Elaborar Diagrama de Classes | 0.29d? | 2016-10-18 09:57 A | 2016-10-18 14:14 A | 16 | 100% |  | 2016-10-18 09:57 | 2016-10-18 14:14 | 0.29d? |  | start no earlier than 2016-10-04 08:00 | Gabriel [87.5%]; Vinícius [87.5%] | 4h | 4h | 600.19 | 600.19 | 600.19 |
| 23 | 1.3.1.2 | Revisar Diagrama de Classes | 0.5d? | 2016-10-18 17:05 A | 2016-10-19 11:05 A | 22 | 100% |  | 2016-10-18 17:05 | 2016-10-19 11:05 | 0.5d? |  | start no earlier than 2016-10-03 08:00 | Fábio [25%]; Renam [25%] | 2h | 2h | 300 | 300 | 300 |
| 24 | 1.3.1.3 | Atualizar MRB | 0.44d? | 2016-10-18 09:57 A | 2016-10-18 15:27 A | 19, 23 | 100% |  | 2016-10-18 09:57 | 2016-10-18 15:27 | 0.44d? |  | start no earlier than 2016-10-03 08:00 | Fábio [28.6%]; Juliana [28.6%] | 2h | 2h | 300 | 300 | 300 |

| ID | WBS | Task | Duration | Start | Finish | Predecessors | Complete | Remaining | Baseline start | Baseline finish | Baseline duration | Total slack | Free slack | Constraint | Resources | Work | Actual work | Cost | Baseline cost | Actual cost |
| --- | --- | --- | --- | --- | --- | --- | --- | --- | --- | --- | --- | --- | --- | --- | --- | --- | --- | --- | --- | --- |
| 25 | 1.3.2 | **Modelo entidade relacionamento** | 0.88d? | 2016-10-18 09:57 A | 2016-10-19 08:57 A |  | 100% |  | 2016-10-18 09:57 | 2016-10-19 08:57 | 0.88d? |  |  |  |  | 2.5h | 2.5h | 375 | 600 | 375 |
| 26 | 1.3.2.1 | Elaborar MER | 0.38d? | 2016-10-18 09:57 A | 2016-10-18 14:57 A | 19 | 100% |  | 2016-10-18 09:57 | 2016-10-18 14:57 | 0.38d? |  |  | start no earlier than 2016-10-03 08:00 | Fábio [50%]; Gabriel | 1.5h | 1.5h | 225 | 450 | 225 |
| 27 | 1.3.2.2 | Revisar MER | 0.25d? | 2016-10-18 16:57 A | 2016-10-19 08:57 A |  | 100% |  | 2016-10-18 16:57 | 2016-10-19 08:57 | 0.25d? |  |  | start no earlier than 2016-10-03 08:00 | Gabriel [25%]; Renam [25%] | 1h | 1h | 150 | 150 | 150 |
| 28 | 1.4 | **Planejamento** | 3.08d? | 2016-10-19 10:08 A | 2016-10-24 10:45 A | 20 | 100% |  | 2016-10-19 10:08 | 2016-10-24 10:45 | 3.08d? |  |  |  |  | 19h | 19h | 2,850 | 2,850 | 2,850 |
| 29 | 1.4.1 | **Reunir-se com a equipe desenvolvedora** | 2.54d? | 2016-10-19 10:08 A | 2016-10-21 15:25 A |  | 100% |  | 2016-10-19 10:08 | 2016-10-21 15:25 | 2.54d? |  |  |  |  | 15h | 15h | 2,250 | 2,250 | 2,250 |
| 30 | 1.4.1.1 | Explanar o cronograma, diagrama de classes e o MER com a equipe | 0.24d? | 2016-10-19 10:08 A | 2016-10-19 14:05 A | 27 | 100% |  | 2016-10-19 10:08 | 2016-10-19 14:05 | 0.24d? |  |  | start no earlier than 2016-10-03 08:00 | Fábio; Vinícius | 2h | 2h | 300 | 300 | 300 |
| 31 | 1.4.1.2 | Discutir os métodos de desenvolvimento | 1d? | 2016-10-19 14:05 A | 2016-10-20 14:05 A | 30 | 100% |  | 2016-10-19 14:05 | 2016-10-20 14:05 | 1d? |  |  | start no earlier than 2016-10-03 08:00 | Gabriel [50%]; Renam [50%] | 8h | 8h | 1,200 | 1,200 | 1,200 |
| 32 | 1.4.1.3 | Dividir as tarefas com a equipe | 0.67d? | 2016-10-20 14:05 A | 2016-10-21 09:25 A | 31 | 100% |  | 2016-10-20 14:05 | 2016-10-21 09:25 | 0.67d? |  |  | start no earlier than 2016-10-03 08:00 | Gabriel [37.5%]; Renam [37.5%] | 4h | 4h | 600 | 600 | 600 |
| 33 | 1.4.1.4 | Explanar o que se espera do projeto | 0.62d? | 2016-10-21 09:25 A | 2016-10-21 15:25 A | 32 | 100% |  | 2016-10-21 09:25 | 2016-10-21 15:25 | 0.62d? |  |  | start no earlier than 2016-10-03 08:00 | Juliana [12.5%]; Vinícius [12.5%] | 1h | 1h | 150 | 150 | 150 |
| 34 | 1.4.2 | **Conferir a infraestrutura da empresa** | 0.54d? | 2016-10-21 15:25 A | 2016-10-24 10:45 A |  | 100% |  | 2016-10-21 15:25 | 2016-10-24 10:45 | 0.54d? |  |  |  |  | 4h | 4h | 600 | 600 | 600 |
| 35 | 1.4.2.1 | Verificar quais softwares irão ser usados e ajustar as ferramentas | 0.67d? | 2016-10-21 15:25 A | 2016-10-24 10:45 A | 33 | 100% |  | 2016-10-21 15:25 | 2016-10-24 10:45 | 0.67d? |  |  | start no earlier than 2016-10-03 08:00 | Fábio [37.5%]; Juliana [37.5%] | 4h | 4h | 600 | 600 | 600 |
| 36 | 1.5 | **Desenvolvimento** | 9.11d? | 2016-10-24 10:45 A | 2016-11-04 11:38 | 28 | 25% | 6.8d? | 2016-10-24 10:45 | 2016-10-31 14:45 | 5.38d? | 0d |  |  |  | 186h | 61.38h | 27,900 | 23,400 | 9,206.25 |
| 37 | 1.5.1 | **Release 01** | 3.81d | 2016-10-24 10:45 A | 2016-10-28 09:15 A |  | 100% |  | 2016-10-24 10:45 | 2016-10-28 10:15 | 3.94d |  |  |  |  | 29h | 29h | 4,350 | 4,500 | 4,350 |
| 38 | 1.5.1.1 | **Implementação** | 1.5d | 2016-10-24 10:45 A | 2016-10-25 15:45 A |  | 100% |  | 2016-10-24 10:45 | 2016-10-25 09:15 | 0.81d |  |  |  |  | 27h | 27h | 4,050 | 3,900 | 4,050 |
| 39 | 1.5.1.1.1 | Implementar RFC01 - Controlar Usuário | 1.62d | 2016-10-24 10:45 A | 2016-10-25 15:45 A |  | 100% |  | 2016-10-24 10:45 | 2016-10-25 09:15 | 0.94d |  |  | start no earlier than 2016-10-03 08:00 | Gabriel; Vinícius | 22h | 22h | 3,300 | 1,950 | 3,300 |
| 40 | 1.5.1.1.2 | Implementar RFC02 - Controlar Professor | 0.31d | 2016-10-24 10:45 A | 2016-10-24 15:15 A |  | 100% |  | 2016-10-24 10:45 | 2016-10-25 09:15 | 0.81d |  |  | start no earlier than 2016-10-03 08:00 | Fábio; Renam | 5h | 5h | 750 | 1,950 | 750 |
| 41 | 1.5.1.2 | **Teste** | 3d | 2016-10-25 09:15 A | 2016-10-28 09:15 A |  | 100% |  | 2016-10-25 09:15 | 2016-10-28 10:15 | 3.12d |  |  |  |  | 2h | 2h | 300 | 600 | 300 |
| 42 | 1.5.1.2.1 | Testar RFC01 - Controlar Usuário | 0.12d | 2016-10-28 08:15 A | 2016-10-28 09:15 A | 39 | 100% |  | 2016-10-28 08:15 | 2016-10-28 10:15 | 0.25d |  |  | start no earlier than 2016-10-03 08:00 | Juliana | 1h | 1h | 150 | 300 | 150 |
| 43 | 1.5.1.2.2 | Testar RFC02 - Controlar Professor | 0.12d | 2016-10-25 09:15 A | 2016-10-25 10:15 A | 40 | 100% |  | 2016-10-25 09:15 | 2016-10-25 11:15 | 0.25d |  |  | start no earlier than 2016-10-03 08:00 | Juliana | 1h | 1h | 150 | 300 | 150 |
| 44 | 1.5.2 | **Release 02** | 8.17d? | 2016-10-25 10:15 A | 2016-11-04 11:38 |  | 56% | 3.61d? | 2016-10-25 11:15 | 2016-10-31 14:15 | 4.25d? | 0d |  |  |  | 50h | 32.38h | 7,500 | 5,400 | 4,856.25 |
| 45 | 1.5.2.1 | **Implementação** | 5.8d? | 2016-10-25 10:15 A | 2016-11-01 17:38 |  | 68% | 1.86d? | 2016-10-25 11:15 | 2016-10-27 14:15 | 2.25d? | 0d |  |  |  | 44h | 30.38h | 6,600 | 4,200 | 4,556.25 |
| 46 | 1.5.2.1.1 | Implementar RFC03 - Controlar Estudantes | 1.47d? | 2016-10-25 10:15 A | 2016-10-26 16:00 A | 43 | 100% |  | 2016-10-25 11:15 | 2016-10-27 14:15 | 0.88d? |  |  | start no earlier than 2016-10-03 08:00 | Juliana; Renam | 12h | 12h | 1,800 | 1,050 | 1,800 |
| 47 | 1.5.2.1.2 | Implementar RFC04 - Controlar Curso | 0.75d? | 2016-10-25 10:15 | 2016-10-26 09:15 | 43 |  |  | 2016-10-25 11:15 | 2016-10-26 15:15 | 0.75d? | 1.09d | 0d | start no earlier than 2016-10-03 08:00 | Fábio; Vinícius | 7h |  | 1,050 | 1,050 |  |
| 48 | 1.5.2.1.3 | Implementar RNFC01 - Autenticar Usuários | 2.69d? | 2016-10-25 10:15 A | 2016-11-01 17:38 | 43 | 69% | 0.83d? | 2016-10-25 11:15 | 2016-10-27 10:15 | 0.88d? | 0d |  |  | Gabriel; Juliana | 25h | 18.38h | 3,750 | 1,050 | 2,756.25 |

| ID | WBS | Task | Duration | Start | Finish | Predecessors | Complete | Remaining | Baseline start | Baseline finish | Baseline duration | Total slack | Free slack | Constraint | Resources | Work | Actual work | Cost | Baseline cost | Actual cost |
| --- | --- | --- | --- | --- | --- | --- | --- | --- | --- | --- | --- | --- | --- | --- | --- | --- | --- | --- | --- | --- |
| 49 | 1.5.2.2 | **Teste** | 7.3d? | 2016-10-26 09:15 A | 2016-11-04 11:38 |  | 17% | 6.08d? | 2016-10-25 16:45 | 2016-10-31 14:15 | 3.69d? | 0d |  |  |  | 6h | 2h | 900 | 1,200 | 300 |
| 50 | 1.5.2.2.1 | Testar RFC03 - Controlar Estudantes | 0.25d | 2016-11-01 10:15 A | 2016-11-01 14:15 A | 46 | 100% |  | 2016-10-28 08:45 | 2016-10-28 10:45 | 0.25d |  |  | start no earlier than 2016-10-03 08:00 | Fábio | 2h | 2h | 300 | 300 | 300 |
| 51 | 1.5.2.2.2 | Testar RFC04 - Controlar Curso | 0.25d | 2016-10-26 09:15 | 2016-10-26 11:15 | 47 |  |  | 2016-10-28 10:15 | 2016-10-28 14:15 | 0.25d | 1.09d | 0d | start no earlier than 2016-10-03 08:00 | Gabriel | 2h |  | 300 | 300 |  |
| 52 | 1.5.2.2.3 | Testar RNFC01 - Autenticar Usuários | 1d? | 2016-11-01 17:38 | 2016-11-04 11:38 | 48 |  |  | 2016-10-28 14:15 | 2016-10-31 14:15 | 1d? | 0d |  |  | Vinícius [25%] | 2h |  | 300 | 300 |  |
| 53 | 1.5.3 | **Release 03** | 5.38d? | 2016-10-26 11:15 | 2016-11-02 15:15 |  |  |  | 2016-10-26 08:45 | 2016-10-31 14:15 | 3.53d? | 1.22d |  |  |  | 49h |  | 7,350 | 7,500 |  |
| 54 | 1.5.3.1 | **Implementação** | 3.5d? | 2016-10-26 11:15 | 2016-10-31 16:15 |  |  |  | 2016-10-26 08:45 | 2016-10-28 14:15 | 2.53d? | 1.22d |  |  |  | 39h |  | 5,850 | 6,000 |  |
| 55 | 1.5.3.1.1 | Implementar RFC05 - Controlar Matéria | 0.62d? | 2016-10-26 11:15 | 2016-10-26 17:15 | 51 |  |  |  |  |  | 1.09d | 0d |  | Gabriel [87.5%]; Vinícius [87.5%] | 7h |  | 1,050 |  |  |
| 56 | 1.5.3.1.2 | Implementar RFC06 - Controlar Tópico | 0.5d | 2016-10-26 17:15 | 2016-10-27 11:15 | 55 |  |  | 2016-10-27 10:15 | 2016-10-28 08:15 | 0.75d | 1.09d | 0d | start no earlier than 2016-10-03 08:00 | Gabriel; Juliana | 8h |  | 1,200 | 1,200 |  |
| 57 | 1.5.3.1.3 | Implementar RFC07 - Controlar Questões | 0.62d | 2016-10-27 11:15 | 2016-10-27 17:15 | 56 |  |  | 2016-10-26 14:45 | 2016-10-28 14:15 | 0.81d | 1.09d | 0d | start no earlier than 2016-10-03 08:00 | Fábio; Vinícius | 8h |  | 1,200 | 1,200 |  |
| 58 | 1.5.3.1.4 | Implementar RFC08 - Controlar Universidades | 1d | 2016-10-27 17:15 | 2016-10-31 08:15 | 57 |  |  | 2016-10-26 08:45 | 2016-10-26 14:45 | 0.5d | 1.59d | 0d | start no earlier than 2016-10-03 08:00 | Gabriel; Renam | 8h |  | 1,200 | 1,200 |  |
| 59 | 1.5.3.1.5 | Implementar RNFC02 - Autenticar por perfil de Usuário | 0.75d | 2016-10-31 08:15 | 2016-10-31 16:15 | 58 |  |  | 2016-10-26 08:45 | 2016-10-27 08:45 | 1d | 1.59d | 0d |  | Gabriel; Juliana | 8h |  | 1,200 | 1,200 |  |
| 60 | 1.5.3.2 | **Teste** | 4.75d? | 2016-10-26 17:15 | 2016-11-02 15:15 |  |  |  | 2016-10-26 14:45 | 2016-10-31 14:15 | 2.94d? | 1.67d |  |  |  | 10h |  | 1,500 | 1,500 |  |
| 61 | 1.5.3.2.1 | Testar RFC05 - Controlar Matéria | 1d? | 2016-10-26 17:15 | 2016-10-28 11:15 | 55 |  |  |  |  |  | 3.12d |  |  | Fábio [25%] | 2h |  | 300 |  |  |
| 62 | 1.5.3.2.2 | Testar RFC06 - Controlar Tópico | 0.25d | 2016-10-27 11:15 | 2016-10-27 15:15 | 56 |  |  | 2016-10-28 08:15 | 2016-10-28 10:15 | 0.25d | 4d |  | start no earlier than 2016-10-03 08:00 | Renam | 2h |  | 300 | 300 |  |
| 63 | 1.5.3.2.3 | Testar RFC07 - Controlar Questões | 0.25d? | 2016-11-01 08:15 | 2016-11-01 10:15 | 57 |  |  | 2016-10-28 14:15 | 2016-10-28 16:15 | 0.25d? | 1.28d |  | start no earlier than 2016-10-03 08:00 | Gabriel | 2h |  | 300 | 300 |  |
| 64 | 1.5.3.2.4 | Testar RFC08 - Controlar Universidades | 0.25d? | 2016-10-31 08:15 | 2016-10-31 10:15 | 58 |  |  | 2016-10-26 14:45 | 2016-10-26 16:45 | 0.25d? | 1.62d | 0d | start no earlier than 2016-10-03 08:00 | Juliana | 2h |  | 300 | 300 |  |
| 65 | 1.5.3.2.5 | Testar RNFC02 - Autenticar por perfil de Usuário | 1d? | 2016-11-01 15:15 | 2016-11-02 15:15 | 59 |  |  | 2016-10-28 14:15 | 2016-10-31 14:15 | 1d? | 1.67d |  |  | Vinícius [25%] | 2h |  | 300 | 300 |  |
| 66 | 1.5.4 | **Release 04** | 7.44d? | 2016-10-24 10:45 | 2016-11-02 15:15 |  |  |  | 2016-10-26 16:45 | 2016-10-31 14:45 | 2.75d? | 1.67d |  |  |  | 58h |  | 8,700 | 6,000 |  |
| 67 | 1.5.4.1 | **Implementação** | 6d? | 2016-10-24 15:15 | 2016-11-01 15:15 |  |  |  | 2016-10-26 16:45 | 2016-10-28 10:45 | 1.38d? | 2.67d |  |  |  | 48h |  | 7,200 | 4,800 |  |
| 68 | 1.5.4.1.1 | Implementar RFC09 - Gerar Atividades | 0.88d? | 2016-10-31 10:15 | 2016-11-01 10:15 | 64 |  |  | 2016-10-26 16:45 | 2016-10-27 15:45 | 1d? | 1.12d | 0d | start no earlier than 2016-10-03 08:00 | Renam; Vinícius | 8h |  | 1,200 | 1,200 |  |
| 69 | 1.5.4.1.2 | Implementar RFC10 - Ranking | 0.75d? | 2016-10-31 14:15 | 2016-11-01 10:15 | 64 |  |  | 2016-10-27 14:45 | 2016-10-28 10:15 | 0.69d? | 1.12d | 0d | start no earlier than 2016-10-03 08:00 | Fábio; Gabriel | 8h |  | 1,200 | 1,200 |  |
| 70 | 1.5.4.1.3 | Implementar RFC11- Relatório de Questões | 1d? | 2016-10-31 16:15 | 2016-11-01 15:15 | 64 |  |  | 2016-10-26 16:45 | 2016-10-28 10:45 | 1d? | 0.62d | 0d | start no earlier than 2016-10-03 08:00 | Juliana; Vinícius | 8h |  | 1,200 | 1,200 |  |
| 71 | 1.5.4.1.4 | Implementar RNF03 - Gerar log de falhas | 1.94d? | 2016-10-24 15:15 | 2016-10-28 11:45 |  |  |  |  |  |  | 3.19d |  |  | Juliana; Renam | 16h |  | 2,400 |  |  |
| 72 | 1.5.4.1.5 | Implementar RNFC04 - Gerar log de ações de Usuários | 0.62d? | 2016-10-31 10:15 | 2016-10-31 16:15 | 64 |  |  | 2016-10-26 16:45 | 2016-10-27 10:45 | 0.5d? | 1.59d | 0d |  | Fábio; Vinícius | 8h |  | 1,200 | 1,200 |  |

| ID | WBS | Task | Duration | Start | Finish | Predecessors | Baseline start | Baseline finish | Baseline duration | Total slack | Constraint | Resources | Work | Cost | Baseline cost |
| --- | --- | --- | --- | --- | --- | --- | --- | --- | --- | --- | --- | --- | --- | --- | --- |
| 73 | 1.5.4.2 | **Teste** | 7.44d? | 2016-10-24 10:45 | 2016-11-02 15:15 |  | 2016-10-28 10:15 | 2016-10-31 14:45 | 1.44d? | 1.67d |  |  | 10h | 1,500 | 1,200 |
| 74 | 1.5.4.2.1 | Testar RFC09 - Gerar Atividades | 0.25d? | 2016-11-01 10:15 | 2016-11-01 14:15 | 68 | 2016-10-28 16:15 | 2016-10-31 08:15 | 0.25d? | 1.12d | start no earlier than 2016-10-03 08:00 | Gabriel | 2h | 300 | 300 |
| 75 | 1.5.4.2.2 | Testar RFC10 - Ranking | 0.25d? | 2016-11-01 10:15 | 2016-11-01 14:15 | 69 | 2016-10-28 10:15 | 2016-10-28 14:15 | 0.25d? | 1.12d | start no earlier than 2016-10-03 08:00 | Renam | 2h | 300 | 300 |
| 76 | 1.5.4.2.3 | Testar RFC11 - Relatório de Questões | 0.25d? | 2016-11-01 15:15 | 2016-11-01 17:15 | 70 | 2016-10-31 10:45 | 2016-10-31 14:45 | 0.25d? | 0.62d | start no earlier than 2016-10-03 08:00 | Fábio | 2h | 300 | 300 |
| 77 | 1.5.4.2.4 | Testar RNFC03 - Gerar log de falhas | 1d? | 2016-10-24 10:45 | 2016-10-28 14:45 |  |  |  |  | 3.06d |  | Juliana [25%] | 2h | 300 |  |
| 78 | 1.5.4.2.5 | Testar RNFC04 - Gerar log de ações de Usuários | 1d? | 2016-11-01 15:15 | 2016-11-02 15:15 | 72 | 2016-10-28 14:15 | 2016-10-31 14:15 | 1d? | 1.67d |  | Vinícius [25%] | 2h | 300 | 300 |
| 79 | 1.6 | **Monitoramento e Controle** | 0.42d? | 2016-11-04 11:38 | 2016-11-04 15:58 | 36 | 2016-10-31 14:45 | 2016-10-31 17:05 | 0.29d? | 0d |  |  | 7h | 1,050 | 1,050 |
| 80 | 1.6.1 | Acompanhar Projeto | 0.29d? | 2016-11-04 11:38 | 2016-11-04 15:58 | 76 | 2016-10-31 14:45 | 2016-10-31 17:05 | 0.29d? | 0d | start no earlier than 2016-10-03 08:00 | Fábio; Gabriel; Juliana | 7h | 1,050 | 1,050 |
| 81 | 1.7 | **Fechamento** | 0.78d | 2016-11-04 15:58 | 2016-11-07 14:12 | 79 | 2016-10-31 17:05 | 2016-11-01 15:19 | 0.78d | 0d |  |  | 19h | 2,850 | 2,850 |
| 82 | 1.7.1 | Revisar Projeto | 0.75d | 2016-11-04 15:58 | 2016-11-07 11:58 | 80 | 2016-10-31 17:05 | 2016-11-01 14:05 | 0.75d | 0.15d | start no earlier than 2016-10-03 08:00 | Renam; Vinícius | 10h | 1,500 | 1,500 |
| 83 | 1.7.2 | Fazer um comparativo com a Proposta Técnica | 0.78d | 2016-11-04 15:58 | 2016-11-07 14:12 | 80 | 2016-10-31 17:05 | 2016-11-01 15:19 | 0.78d | 0d | start no earlier than 2016-10-03 08:00 | Fábio; Juliana | 9h | 1,350 | 1,350 |
| 84 | 1.8 | **Controle de Mudanças** | 0.25d | 2016-11-07 14:12 | 2016-11-07 16:12 | 81 | 2016-11-01 15:19 | 2016-11-01 17:19 | 0.25d | 0d |  |  | 10h | 1,500 | 1,500 |
| 85 | 1.8.1 | Realizar mudanças se o projeto não estiver dentro do desejado | 0.25d | 2016-11-07 14:12 | 2016-11-07 16:12 | 83 | 2016-11-01 15:19 | 2016-11-01 17:19 | 0.25d | 0d | start no earlier than 2016-10-03 08:00 | Fábio; Gabriel; Juliana; Renam; Vinícius | 10h | 1,500 | 1,500 |
