# Cronograma_Preliminar

Schedule from MS Project, 2016-10-03 to 2016-11-02, costs in R$, A marks actual dates.

## Calendars

- Padrão: Mon-Fri 09:00-12:00, 13:00-18:00; Sat-Sun off.

## Resources

| Resource | Rate |
| --- | --- |
| Vinícius | 150 |
| Cliente (Adler) |  |
| Gabriel | 150 |
| Renam | 150 |
| Fábio | 150 |
| Juliana | 150 |

## Schedule

| ID | WBS | Task | Duration | Start | Finish | Predecessors | Complete | Remaining | Actual start | Actual finish | Baseline start | Baseline finish | Baseline duration | Total slack | Constraint | Resources | Work | Actual work | Cost | Baseline cost | Actual cost |
| --- | --- | --- | --- | --- | --- | --- | --- | --- | --- | --- | --- | --- | --- | --- | --- | --- | --- | --- | --- | --- | --- |
| 1 | 1 | **Projeto Sala de Aula** | 22.17d? | 2016-10-03 08:00 A | 2016-11-02 10:19 |  | 44% | 12.44d? |  |  | 2016-10-03 08:00 | 2016-11-01 17:19 | 21.92d? | 0d |  |  | 289h | 127h | 43,350.34 | 42,300.34 | 19,050.34 |
| 2 | 1.1 | **Prospecção** | 2.81d | 2016-10-03 08:00 A | 2016-10-05 16:30 A |  | 100% |  |  |  | 2016-10-03 08:00 | 2016-10-05 16:30 | 2.81d |  |  |  | 13h | 13h | 1,950 | 1,950 | 1,950 |
| 3 | 1.1.1 | **Proposta Técnica** | 2d | 2016-10-03 08:00 A | 2016-10-05 08:15 A |  | 100% |  |  |  | 2016-10-03 08:00 | 2016-10-05 08:15 | 2d |  |  |  | 7h | 7h | 1,050 | 1,050 | 1,050 |
| 4 | 1.1.1.1 | Estudar Domínio de Aplicação | 0.25d | 2016-10-03 08:00 A | 2016-10-03 10:00 A |  | 100% |  |  |  | 2016-10-03 08:00 | 2016-10-03 10:00 | 0.25d |  | start no earlier than 2016-10-03 08:00 | Renam [50%]; Fábio; Gabriel; Juliana; Vinícius | 1h | 1h | 150 | 150 | 150 |
| 5 | 1.1.1.2 | Redigir Proposta Técnica | 0.21d | 2016-10-04 14:00 A | 2016-10-04 15:40 A | 4 | 100% |  |  |  | 2016-10-04 14:00 | 2016-10-04 15:40 | 0.21d |  | start no earlier than 2016-10-03 08:00 | Fábio; Juliana; Vinícius; Gabriel; Renam | 5h | 5h | 750 | 750 | 750 |
| 6 | 1.1.1.3 | Revisar Proposta Técnica | 0.03d | 2016-10-05 08:00 A | 2016-10-05 08:15 A | 5 | 100% |  |  |  | 2016-10-05 08:00 | 2016-10-05 08:15 | 0.03d |  | start no earlier than 2016-10-03 08:00 | Fábio; Gabriel; Juliana; Renam | 1h | 1h | 150 | 150 | 150 |
| 7 | 1.1.2 | **Estimativa Preliminar de Tamanho** | 0.19d | 2016-10-05 08:30 A | 2016-10-05 10:30 A |  | 100% |  |  |  | 2016-10-05 08:30 | 2016-10-05 10:30 | 0.19d |  |  |  | 2h | 2h | 300 | 300 | 300 |
| 8 | 1.1.2.1 | Estimar Tamanho do Projeto | 0.12d | 2016-10-05 08:30 A | 2016-10-05 09:30 A | 6 | 100% |  |  |  | 2016-10-05 08:30 | 2016-10-05 09:30 | 0.12d |  | start no earlier than 2016-10-03 08:00 | Gabriel | 1h | 1h | 150 | 150 | 150 |
| 9 | 1.1.2.2 | Revisar Estimativa de Tamanho do Projeto | 0.12d | 2016-10-05 09:30 A | 2016-10-05 10:30 A | 8 | 100% |  |  |  | 2016-10-05 09:30 | 2016-10-05 10:30 | 0.12d |  | start no earlier than 2016-10-03 08:00 | Vinícius | 1h | 1h | 150 | 150 | 150 |
| 10 | 1.1.3 | **Estimativa Preliminar de Cronograma e Orçamento** | 0.62d | 2016-10-05 10:30 A | 2016-10-05 16:30 A |  | 100% |  |  |  | 2016-10-05 10:30 | 2016-10-05 16:30 | 0.62d |  |  |  | 4h | 4h | 600 | 600 | 600 |
| 11 | 1.1.3.1 | Elaborar Cronograma e Orçamento Preliminares | 0.38d | 2016-10-05 10:30 A | 2016-10-05 15:30 A | 9 | 100% |  |  |  | 2016-10-05 10:30 | 2016-10-05 15:30 | 0.38d |  | start no earlier than 2016-10-03 08:00 | Fábio | 3h | 3h | 450 | 450 | 450 |
| 12 | 1.1.3.2 | Revisar Cronograma e Orçamento Preliminares | 0.12d | 2016-10-05 15:30 A | 2016-10-05 16:30 A | 11 | 100% |  |  |  | 2016-10-05 15:30 | 2016-10-05 16:30 | 0.12d |  | start no earlier than 2016-10-03 08:00 | Juliana | 1h | 1h | 150 | 150 | 150 |
| 13 | 1.2 | **Análise** | 8.31d? | 2016-10-05 16:30 A | 2016-10-18 09:57 A | 2 | 100% |  |  |  | 2016-10-05 16:30 | 2016-10-18 09:57 | 8.31d? |  |  |  | 46h | 46h | 6,900.15 | 6,900.15 | 6,900.15 |
| 14 | 1.2.1 | **Documento de Requisitos** | 3.31d? | 2016-10-05 16:30 A | 2016-10-11 09:57 A |  | 100% |  |  |  | 2016-10-05 16:30 | 2016-10-11 09:57 | 3.31d? |  |  |  | 20h | 20h | 3,000.15 | 3,000.15 | 3,000.15 |
| 15 | 1.2.1.1 | Elaborar o Documento de Requisitos | 0.93d? | 2016-10-05 16:30 A | 2016-10-06 15:54 A | 12 | 100% |  |  |  | 2016-10-05 16:30 | 2016-10-06 15:54 | 0.93d? |  | start no earlier than 2016-10-03 08:00 | Fábio [67.6%]; Juliana [67.6%]; Vinícius [67.6%] | 15h | 15h | 2,250.15 | 2,250.15 | 2,250.15 |
| 16 | 1.2.1.2 | Revisar Documentos de Requisitos | 1.46d? | 2016-10-07 16:17 A | 2016-10-11 09:57 A | 15 | 100% |  |  |  | 2016-10-07 16:17 | 2016-10-11 09:57 | 1.46d? |  | start no earlier than 2016-10-03 08:00 | Gabriel [14.3%]; Juliana [14.3%]; Renam [14.3%] | 5h | 5h | 750 | 750 | 750 |
| 17 | 1.2.2 | **Matriz de Rastreabilidade Bidirecional** | 3.83d? | 2016-10-12 11:17 A | 2016-10-18 09:57 A |  | 100% |  |  |  | 2016-10-12 11:17 | 2016-10-18 09:57 | 3.83d? |  |  |  | 26h | 26h | 3,900 | 3,900 | 3,900 |
| 18 | 1.2.2.1 | Elaborar MRB | 0.67d? | 2016-10-12 11:17 A | 2016-10-13 08:37 A | 16 | 100% |  |  |  | 2016-10-12 11:17 | 2016-10-13 08:37 | 0.67d? |  | start no earlier than 2016-10-03 08:00 | Gabriel; Renam; Vinícius | 16h | 16h | 2,400 | 2,400 | 2,400 |
| 19 | 1.2.2.2 | Revisar MRB | 2.5d? | 2016-10-13 15:57 A | 2016-10-18 09:57 A | 18 | 100% |  |  |  | 2016-10-13 15:57 | 2016-10-18 09:57 | 2.5d? |  | start no earlier than 2016-10-03 08:00 | Fábio [25%]; Juliana [25%] | 10h | 10h | 1,500 | 1,500 | 1,500 |
| 20 | 1.3 | **Projeto** | 1.14d? | 2016-10-18 09:00 | 2016-10-19 10:08 | 13 | 100% |  | 2016-10-18 09:57 | 2016-10-19 11:05 | 2016-10-18 09:00 | 2016-10-19 10:08 | 1.14d? |  |  |  | 12h | 12h | 1,800.19 | 1,800.19 | 1,800.19 |
| 21 | 1.3.1 | **Diagrama de Classes** | 1.14d? | 2016-10-18 09:57 A | 2016-10-19 11:05 A |  | 100% |  |  |  | 2016-10-18 09:57 | 2016-10-19 11:05 | 1.14d? |  |  |  | 8h | 8h | 1,200.19 | 1,200.19 | 1,200.19 |
| 22 | 1.3.1.1 | Elaborar Diagrama de Classes | 0.29d? | 2016-10-18 09:57 A | 2016-10-18 14:14 A | 16 | 100% |  |  |  | 2016-10-18 09:57 | 2016-10-18 14:14 | 0.29d? |  | start no earlier than 2016-10-04 08:00 | Gabriel [87.5%]; Vinícius [87.5%] | 4h | 4h | 600.19 | 600.19 | 600.19 |
| 23 | 1.3.1.2 | Revisar Diagrama de Classes | 0.5d? | 2016-10-18 17:05 A | 2016-10-19 11:05 A | 22 | 100% |  |  |  | 2016-10-18 17:05 | 2016-10-19 11:05 | 0.5d? |  | start no earlier than 2016-10-03 08:00 | Fábio [25%]; Renam [25%] | 2h | 2h | 300 | 300 | 300 |
| 24 | 1.3.1.3 | Atualizar MRB | 0.44d? | 2016-10-18 09:57 A | 2016-10-18 15:27 A | 19, 23 | 100% |  |  |  | 2016-10-18 09:57 | 2016-10-18 15:27 | 0.44d? |  | start no earlier than 2016-10-03 08:00 | Fábio [28.6%]; Juliana [28.6%] | 2h | 2h | 300 | 300 | 300 |

| ID | WBS | Task | Duration | Start | Finish | Predecessors | Complete | Remaining | Baseline start | Baseline finish | Baseline duration | Total slack | Free slack | Constraint | Resources | Work | Actual work | Cost | Baseline cost | Actual cost |
| --- | --- | --- | --- | --- | --- | --- | --- | --- | --- | --- | --- | --- | --- | --- | --- | --- | --- | --- | --- | --- |
| 25 | 1.3.2 | **Modelo entidade relacionamento** | 0.88d? | 2016-10-18 09:57 A | 2016-10-19 08:57 A |  | 100% |  | 2016-10-18 09:57 | 2016-10-19 08:57 | 0.88d? |  |  |  |  | 4h | 4h | 600 | 600 | 600 |
| 26 | 1.3.2.1 | Elaborar MER | 0.38d? | 2016-10-18 09:57 A | 2016-10-18 14:57 A | 19 | 100% |  | 2016-10-18 09:57 | 2016-10-18 14:57 | 0.38d? |  |  | start no earlier than 2016-10-03 08:00 | Fábio [50%]; Vinícius [50%] | 3h | 3h | 450 | 450 | 450 |
| 27 | 1.3.2.2 | Revisar MER | 0.25d? | 2016-10-18 16:57 A | 2016-10-19 08:57 A |  | 100% |  | 2016-10-18 16:57 | 2016-10-19 08:57 | 0.25d? |  |  | start no earlier than 2016-10-03 08:00 | Gabriel [25%]; Renam [25%] | 1h | 1h | 150 | 150 | 150 |
| 28 | 1.4 | **Planejamento** | 3.08d? | 2016-10-19 10:08 A | 2016-10-24 10:45 A | 20 | 100% |  | 2016-10-19 10:08 | 2016-10-24 10:45 | 3.08d? |  |  |  |  | 19h | 19h | 2,850 | 2,850 | 2,850 |
| 29 | 1.4.1 | **Reunir-se com a equipe desenvolvedora** | 2.54d? | 2016-10-19 10:08 A | 2016-10-21 15:25 A |  | 100% |  | 2016-10-19 10:08 | 2016-10-21 15:25 | 2.54d? |  |  |  |  | 15h | 15h | 2,250 | 2,250 | 2,250 |
| 30 | 1.4.1.1 | Explanar o cronograma, diagrama de classes e o MER com a equipe | 0.24d? | 2016-10-19 10:08 A | 2016-10-19 14:05 A | 27 | 100% |  | 2016-10-19 10:08 | 2016-10-19 14:05 | 0.24d? |  |  | start no earlier than 2016-10-03 08:00 | Fábio; Vinícius | 2h | 2h | 300 | 300 | 300 |
| 31 | 1.4.1.2 | Discutir os métodos de desenvolvimento | 1d? | 2016-10-19 14:05 A | 2016-10-20 14:05 A | 30 | 100% |  | 2016-10-19 14:05 | 2016-10-20 14:05 | 1d? |  |  | start no earlier than 2016-10-03 08:00 | Gabriel [50%]; Renam [50%] | 8h | 8h | 1,200 | 1,200 | 1,200 |
| 32 | 1.4.1.3 | Dividir as tarefas com a equipe | 0.67d? | 2016-10-20 14:05 A | 2016-10-21 09:25 A | 31 | 100% |  | 2016-10-20 14:05 | 2016-10-21 09:25 | 0.67d? |  |  | start no earlier than 2016-10-03 08:00 | Gabriel [37.5%]; Renam [37.5%] | 4h | 4h | 600 | 600 | 600 |
| 33 | 1.4.1.4 | Explanar o que se espera do projeto | 0.62d? | 2016-10-21 09:25 A | 2016-10-21 15:25 A | 32 | 100% |  | 2016-10-21 09:25 | 2016-10-21 15:25 | 0.62d? |  |  | start no earlier than 2016-10-03 08:00 | Juliana [12.5%]; Vinícius [12.5%] | 1h | 1h | 150 | 150 | 150 |
| 34 | 1.4.2 | **Conferir a infraestrutura da empresa** | 0.54d? | 2016-10-21 15:25 A | 2016-10-24 10:45 A |  | 100% |  | 2016-10-21 15:25 | 2016-10-24 10:45 | 0.54d? |  |  |  |  | 4h | 4h | 600 | 600 | 600 |
| 35 | 1.4.2.1 | Verificar quais softwares irão ser usados e ajustar as ferramentas | 0.67d? | 2016-10-21 15:25 A | 2016-10-24 10:45 A | 33 | 100% |  | 2016-10-21 15:25 | 2016-10-24 10:45 | 0.67d? |  |  | start no earlier than 2016-10-03 08:00 | Fábio [37.5%]; Juliana [37.5%] | 4h | 4h | 600 | 600 | 600 |
| 36 | 1.5 | **Desenvolvimento** | 5.62d? | 2016-10-24 10:45 A | 2016-10-31 16:45 | 28 | 14% | 4.83d? | 2016-10-24 10:45 | 2016-10-31 14:45 | 5.38d? | 0d |  |  |  | 163h | 37h | 24,450 | 23,400 | 5,550 |
| 37 | 1.5.1 | **Release 01** | 3.81d | 2016-10-24 10:45 A | 2016-10-28 09:15 A |  | 100% |  | 2016-10-24 10:45 | 2016-10-28 10:15 | 3.94d |  |  |  |  | 37h | 37h | 5,550 | 4,500 | 5,550 |
| 38 | 1.5.1.1 | **Implementação** | 1.5d | 2016-10-24 10:45 A | 2016-10-25 15:45 A |  | 100% |  | 2016-10-24 10:45 | 2016-10-25 09:15 | 0.81d |  |  |  |  | 35h | 35h | 5,250 | 3,900 | 5,250 |
| 39 | 1.5.1.1.1 | Implementar RFC01 | 1.62d | 2016-10-24 10:45 A | 2016-10-25 15:45 A |  | 100% |  | 2016-10-24 10:45 | 2016-10-25 09:15 | 0.94d |  |  | start no earlier than 2016-10-03 08:00 | Gabriel; Vinícius | 22h | 22h | 3,300 | 1,950 | 3,300 |
| 40 | 1.5.1.1.2 | Implementar RFC02 | 0.81d | 2016-10-24 10:45 A | 2016-10-25 09:15 A |  | 100% |  | 2016-10-24 10:45 | 2016-10-25 09:15 | 0.81d |  |  | start no earlier than 2016-10-03 08:00 | Fábio; Renam | 13h | 13h | 1,950 | 1,950 | 1,950 |
| 41 | 1.5.1.2 | **Teste** | 3d | 2016-10-25 09:15 A | 2016-10-28 09:15 A |  | 100% |  | 2016-10-25 09:15 | 2016-10-28 10:15 | 3.12d |  |  |  |  | 2h | 2h | 300 | 600 | 300 |
| 42 | 1.5.1.2.1 | Testar RFC01 | 0.12d | 2016-10-28 08:15 A | 2016-10-28 09:15 A | 39 | 100% |  | 2016-10-28 08:15 | 2016-10-28 10:15 | 0.25d |  |  | start no earlier than 2016-10-03 08:00 | Juliana | 1h | 1h | 150 | 300 | 150 |
| 43 | 1.5.1.2.2 | Testar RFC02 | 0.12d | 2016-10-25 09:15 A | 2016-10-25 10:15 A | 40 | 100% |  | 2016-10-25 09:15 | 2016-10-25 11:15 | 0.25d |  |  | start no earlier than 2016-10-03 08:00 | Juliana | 1h | 1h | 150 | 300 | 150 |
| 44 | 1.5.2 | **Release 02** | 4.69d? | 2016-10-25 10:15 | 2016-10-31 16:45 |  |  |  | 2016-10-25 11:15 | 2016-10-31 14:15 | 4.25d? | 0d |  |  |  | 36h |  | 5,400 | 5,400 |  |
| 45 | 1.5.2.1 | **Implementação** | 2.44d? | 2016-10-25 10:15 | 2016-10-27 14:45 |  |  |  | 2016-10-25 11:15 | 2016-10-27 14:15 | 2.25d? | 0d |  |  |  | 28h |  | 4,200 | 4,200 |  |
| 46 | 1.5.2.1.1 | Implementar RFC03 | 0.88d? | 2016-10-25 10:15 | 2016-10-26 09:15 | 43 |  |  | 2016-10-25 11:15 | 2016-10-27 14:15 | 0.88d? | 3.56d | 0d | start no earlier than 2016-10-03 08:00 | Juliana; Renam | 7h |  | 1,050 | 1,050 |  |
| 47 | 1.5.2.1.2 | Implementar RFC04 | 0.88d? | 2016-10-25 10:15 | 2016-10-26 17:45 | 43 |  |  | 2016-10-25 11:15 | 2016-10-26 15:15 | 0.75d? | 2.03d | 0d | start no earlier than 2016-10-03 08:00 | Fábio; Vinícius | 7h |  | 1,050 | 1,050 |  |
| 48 | 1.5.2.1.3 | Implementar RFC05 | 0.56d? | 2016-10-25 14:45 | 2016-10-26 09:15 | 43 |  |  | 2016-10-25 11:15 | 2016-10-25 16:45 | 0.56d? | 0d |  | start no earlier than 2016-10-03 08:00 | Gabriel; Vinícius | 7h |  | 1,050 | 1,050 |  |
| 49 | 1.5.2.1.4 | Implementar RNFC01 | 0.88d? | 2016-10-25 10:15 | 2016-10-27 14:45 | 43 |  |  | 2016-10-25 11:15 | 2016-10-27 10:15 | 0.88d? | 0d |  |  | Gabriel; Juliana | 7h |  | 1,050 | 1,050 |  |

| ID | WBS | Task | Duration | Start | Finish | Predecessors | Baseline start | Baseline finish | Baseline duration | Total slack | Free slack | Constraint | Resources | Work | Cost | Baseline cost |
| --- | --- | --- | --- | --- | --- | --- | --- | --- | --- | --- | --- | --- | --- | --- | --- | --- |
| 50 | 1.5.2.2 | **Teste** | 3.81d? | 2016-10-26 09:15 | 2016-10-31 16:45 |  | 2016-10-25 16:45 | 2016-10-31 14:15 | 3.69d? | 0d |  |  |  | 8h | 1,200 | 1,200 |
| 51 | 1.5.2.2.1 | Testar RFC03 | 0.25d | 2016-10-26 09:15 | 2016-10-26 11:15 | 46 | 2016-10-28 08:45 | 2016-10-28 10:45 | 0.25d | 3.56d |  | start no earlier than 2016-10-03 08:00 | Fábio | 2h | 300 | 300 |
| 52 | 1.5.2.2.2 | Testar RFC04 | 0.25d | 2016-10-28 14:45 | 2016-10-28 16:45 | 47 | 2016-10-28 10:15 | 2016-10-28 14:15 | 0.25d | 1d |  | start no earlier than 2016-10-03 08:00 | Gabriel | 2h | 300 | 300 |
| 53 | 1.5.2.2.3 | Testar RFC05 | 0.25d? | 2016-10-26 09:15 | 2016-10-26 11:15 | 48 | 2016-10-25 16:45 | 2016-10-26 08:45 | 0.25d? | 0d |  | start no earlier than 2016-10-03 08:00 | Renam | 2h | 300 | 300 |
| 54 | 1.5.2.2.4 | Testar RNFC01 | 1d? | 2016-10-28 16:45 | 2016-10-31 16:45 | 49 | 2016-10-28 14:15 | 2016-10-31 14:15 | 1d? | 0d |  |  | Vinícius [25%] | 2h | 300 | 300 |
| 55 | 1.5.3 | **Release 03** | 3.56d? | 2016-10-26 11:15 | 2016-10-31 16:45 |  | 2016-10-26 08:45 | 2016-10-31 14:15 | 3.53d? | 0d |  |  |  | 50h | 7,500 | 7,500 |
| 56 | 1.5.3.1 | **Implementação** | 2.56d? | 2016-10-26 11:15 | 2016-10-28 16:45 |  | 2016-10-26 08:45 | 2016-10-28 14:15 | 2.53d? | 0d |  |  |  | 40h | 6,000 | 6,000 |
| 57 | 1.5.3.1.1 | Implementar RFC06 | 0.94d | 2016-10-27 09:15 | 2016-10-28 08:45 | 53 | 2016-10-27 10:15 | 2016-10-28 08:15 | 0.75d | 1.6d | 0d | start no earlier than 2016-10-03 08:00 | Gabriel; Juliana | 8h | 1,200 | 1,200 |
| 58 | 1.5.3.1.2 | Implementar RFC07 | 0.81d | 2016-10-26 17:15 | 2016-10-28 16:45 | 53 | 2016-10-26 14:45 | 2016-10-28 14:15 | 0.81d | 0.62d | 0d | start no earlier than 2016-10-03 08:00 | Fábio; Vinícius | 8h | 1,200 | 1,200 |
| 59 | 1.5.3.1.3 | Implementar RFC08 | 0.5d | 2016-10-26 11:15 | 2016-10-26 17:15 | 53 | 2016-10-26 08:45 | 2016-10-26 14:45 | 0.5d | 0d |  | start no earlier than 2016-10-03 08:00 | Gabriel; Renam | 8h | 1,200 | 1,200 |
| 60 | 1.5.3.1.4 | Implementar RNFC02 | 1d | 2016-10-26 11:15 | 2016-10-27 11:15 | 53 | 2016-10-26 08:45 | 2016-10-27 08:45 | 1d | 0d |  |  | Gabriel; Juliana | 8h | 1,200 | 1,200 |
| 61 | 1.5.3.1.5 | Implementar RNFC03 | 0.62d? | 2016-10-26 11:15 | 2016-10-26 17:15 | 53 | 2016-10-26 08:45 | 2016-10-26 14:45 | 0.62d? | 0.09d | 0d |  | Fábio; Vinícius | 8h | 1,200 | 1,200 |
| 62 | 1.5.3.2 | **Teste** | 2.94d? | 2016-10-26 17:15 | 2016-10-31 16:45 |  | 2016-10-26 14:45 | 2016-10-31 14:15 | 2.94d? | 0d |  |  |  | 10h | 1,500 | 1,500 |
| 63 | 1.5.3.2.1 | Testar RFC06 | 0.25d | 2016-10-28 08:45 | 2016-10-28 10:45 | 57 | 2016-10-28 08:15 | 2016-10-28 10:15 | 0.25d | 1.6d |  | start no earlier than 2016-10-03 08:00 | Renam | 2h | 300 | 300 |
| 64 | 1.5.3.2.2 | Testar RFC07 | 0.25d? | 2016-10-28 16:45 | 2016-10-31 08:45 | 58 | 2016-10-28 14:15 | 2016-10-28 16:15 | 0.25d? | 0.75d |  | start no earlier than 2016-10-03 08:00 | Gabriel | 2h | 300 | 300 |
| 65 | 1.5.3.2.3 | Testar RFC08 | 0.25d? | 2016-10-26 17:15 | 2016-10-27 09:15 | 59 | 2016-10-26 14:45 | 2016-10-26 16:45 | 0.25d? | 0d |  | start no earlier than 2016-10-03 08:00 | Juliana | 2h | 300 | 300 |
| 66 | 1.5.3.2.4 | Testar RNFC02 | 1d? | 2016-10-28 16:45 | 2016-10-31 16:45 | 60 | 2016-10-28 14:15 | 2016-10-31 14:15 | 1d? | 0d |  |  | Vinícius [25%] | 2h | 300 | 300 |
| 67 | 1.5.3.2.5 | Testar RNFC03 | 1d? | 2016-10-28 11:15 | 2016-10-31 11:15 | 61 | 2016-10-28 10:45 | 2016-10-31 10:45 | 1d? | 0.56d |  |  | Fábio [25%] | 2h | 300 | 300 |
| 68 | 1.5.4 | **Release 04** | 2.81d? | 2016-10-27 09:15 | 2016-10-31 16:45 |  | 2016-10-26 16:45 | 2016-10-31 14:45 | 2.75d? | 0d |  |  |  | 40h | 6,000 | 6,000 |
| 69 | 1.5.4.1 | **Implementação** | 1.56d? | 2016-10-27 09:15 | 2016-10-28 14:45 |  | 2016-10-26 16:45 | 2016-10-28 10:45 | 1.38d? | 0d |  |  |  | 32h | 4,800 | 4,800 |
| 70 | 1.5.4.1.1 | Implementar RFC09 | 0.88d? | 2016-10-27 09:15 | 2016-10-28 09:15 | 65 | 2016-10-26 16:45 | 2016-10-27 15:45 | 1d? | 0.62d | 0d | start no earlier than 2016-10-03 08:00 | Renam; Vinícius | 8h | 1,200 | 1,200 |
| 71 | 1.5.4.1.2 | Implementar RFC10 | 0.69d? | 2016-10-27 17:15 | 2016-10-28 14:45 | 65 | 2016-10-27 14:45 | 2016-10-28 10:15 | 0.69d? | 1d | 0d | start no earlier than 2016-10-03 08:00 | Fábio; Gabriel | 8h | 1,200 | 1,200 |
| 72 | 1.5.4.1.3 | Implementar RFC11 | 0.88d? | 2016-10-27 15:15 | 2016-10-28 14:15 | 65 | 2016-10-26 16:45 | 2016-10-28 10:45 | 1d? | 0.44d | 0d | start no earlier than 2016-10-03 08:00 | Juliana; Vinícius | 8h | 1,200 | 1,200 |
| 73 | 1.5.4.1.4 | Implementar RNFC04 | 0.62d? | 2016-10-27 09:15 | 2016-10-27 15:15 | 65 | 2016-10-26 16:45 | 2016-10-27 10:45 | 0.5d? | 0d |  |  | Fábio; Vinícius | 8h | 1,200 | 1,200 |

| ID | WBS | Task | Duration | Start | Finish | Predecessors | Baseline start | Baseline finish | Baseline duration | Total slack | Constraint | Resources | Work | Cost | Baseline cost |
| --- | --- | --- | --- | --- | --- | --- | --- | --- | --- | --- | --- | --- | --- | --- | --- |
| 74 | 1.5.4.2 | **Teste** | 1.25d? | 2016-10-28 14:45 | 2016-10-31 16:45 |  | 2016-10-28 10:15 | 2016-10-31 14:45 | 1.44d? | 0d |  |  | 8h | 1,200 | 1,200 |
| 75 | 1.5.4.2.1 | Testar RFC09 | 0.25d? | 2016-10-31 08:45 | 2016-10-31 10:45 | 70 | 2016-10-28 16:15 | 2016-10-31 08:15 | 0.25d? | 0.6d | start no earlier than 2016-10-03 08:00 | Gabriel | 2h | 300 | 300 |
| 76 | 1.5.4.2.2 | Testar RFC10 | 0.25d? | 2016-10-28 14:45 | 2016-10-28 16:45 | 71 | 2016-10-28 10:15 | 2016-10-28 14:15 | 0.25d? | 1d | start no earlier than 2016-10-03 08:00 | Renam | 2h | 300 | 300 |
| 77 | 1.5.4.2.3 | Testar RFC11 | 0.25d? | 2016-10-31 11:15 | 2016-10-31 15:15 | 72 | 2016-10-31 10:45 | 2016-10-31 14:45 | 0.25d? | 0.19d | start no earlier than 2016-10-03 08:00 | Fábio | 2h | 300 | 300 |
| 78 | 1.5.4.2.4 | Testar RNFC04 | 1d? | 2016-10-28 16:45 | 2016-10-31 16:45 | 73 | 2016-10-28 14:15 | 2016-10-31 14:15 | 1d? | 0d |  | Vinícius [25%] | 2h | 300 | 300 |
| 79 | 1.6 | **Monitoramento e Controle** | 0.17d? | 2016-10-31 16:45 | 2016-11-01 09:05 | 36 | 2016-10-31 14:45 | 2016-10-31 17:05 | 0.29d? | 0d |  |  | 7h | 1,050 | 1,050 |
| 80 | 1.6.1 | Acompanhar Projeto | 0.29d? | 2016-10-31 16:45 | 2016-11-01 09:05 | 77 | 2016-10-31 14:45 | 2016-10-31 17:05 | 0.29d? | 0d | start no earlier than 2016-10-03 08:00 | Fábio; Gabriel; Juliana | 7h | 1,050 | 1,050 |
| 81 | 1.7 | **Fechamento** | 0.9d | 2016-11-01 09:05 | 2016-11-01 17:19 | 79 | 2016-10-31 17:05 | 2016-11-01 15:19 | 0.78d | 0d |  |  | 19h | 2,850 | 2,850 |
| 82 | 1.7.1 | Revisar Projeto | 0.75d | 2016-11-01 09:05 | 2016-11-01 16:05 | 80 | 2016-10-31 17:05 | 2016-11-01 14:05 | 0.75d | 0.15d | start no earlier than 2016-10-03 08:00 | Renam; Vinícius | 10h | 1,500 | 1,500 |
| 83 | 1.7.2 | Fazer um comparativo com a Proposta Técnica | 0.78d | 2016-11-01 09:05 | 2016-11-01 17:19 | 80 | 2016-10-31 17:05 | 2016-11-01 15:19 | 0.78d | 0d | start no earlier than 2016-10-03 08:00 | Fábio; Juliana | 9h | 1,350 | 1,350 |
| 84 | 1.8 | **Controle de Mudanças** | 0.25d | 2016-11-01 17:19 | 2016-11-02 10:19 | 81 | 2016-11-01 15:19 | 2016-11-01 17:19 | 0.25d | 0d |  |  | 10h | 1,500 | 1,500 |
| 85 | 1.8.1 | Realizar mudanças se o projeto não estiver dentro do desejado | 0.38d | 2016-11-01 17:19 | 2016-11-02 10:19 | 83 | 2016-11-01 15:19 | 2016-11-01 17:19 | 0.25d | 0d | start no earlier than 2016-10-03 08:00 | Fábio; Gabriel; Juliana; Renam; Vinícius | 10h | 1,500 | 1,500 |
